Schedule from MS Project, 2025-09-15 to 2026-11-23, costs in ₽, A marks actual dates.

## Calendars

- Стандартный: Mon-Fri 09:00-13:00, 14:00-18:00; Sat-Sun off. Exceptions (off unless hours are given): 2025-11-04 (День народного единства), 2025-11-07 (День Октябрьской революции, recurring), 2026-01-01 to 2027-01-01 (Новый год, recurring), 2026-01-07 (Рождество, recurring), 2026-03-08 (Международный женский день, recurring), 2026-05-01 (Праздник Весны и Труда), 2026-05-09 (День Победы, recurring), 2026-07-03 (День Независимости Республики Беларусь, recurring).

## Resources

| Resource | Unit | Rate | Cost per use |
| --- | --- | --- | --- |
| Архитектор |  |  | 550000 |
| МУП «Горгаз» |  |  | 700000 |
| МУП «Водоканал» |  |  | 500000 |
| АО «Водолей2» |  |  | 500000 |
| Рабочий1 |  | 1250 |  |
| Рабочий2 |  | 1250 |  |
| Рабочий3 |  | 1250 |  |
| Подсобник1 |  | 500 |  |
| Подсобник2 |  | 500 |  |
| Трактор |  |  | 70000 |
| Плотник1 |  | 18750 |  |
| Плотник1 |  |  | 75000 |
| Плотник2 |  | 18750 |  |
| Плотник2 |  |  | 75000 |
| АО «Неопласт» |  |  | 1200000 |
| Водопроводчик1 |  | 1000 |  |
| Водопроводчик2 |  | 1000 |  |
| Электрик |  | 1250 |  |
| АО «Газовик» |  |  | 250000 |
| ООО «Потолки» |  |  | 1500000 |
| Песок | т | 5000 |  |
| Щебень | т | 6000 |  |
| Цемент | т | 780000 | 250000 |
| Кирпич | шт | 70 |  |
| Брус |  |  | 250000 |
| Доска обрезная | м3 | 70000 |  |
| Доска необрезная | м3 | 50000 |  |
| Шифер |  |  | 400000 |
| Электропровод |  |  | 150000 |
| Электросчетчик |  |  | 50000 |
| Труба водопроводная |  |  | 350000 |
| Труба канализационная |  |  | 300000 |
| Штукатурка |  |  | 1500000 |
| Потолок | м2 | 1500 |  |
| Окно |  | 100000 |  |
| Дверь наружная |  |  | 200000 |
| Труба отопительная |  |  | 200000 |
| Котел |  |  | 400000 |
| Печь газовая |  |  | 200000 |
| Ванна |  | 450000 |  |
| Унитаз компакт |  | 200000 |  |
| Раковина |  | 160000 |  |
| Кран |  | 70000 |  |
| Паркет | м2 | 5500 |  |
| Труба газовая |  |  | 500000 |
| Дверь внутренняя |  | 90000 |  |
| Доставка |  |  |  |

## Schedule

| ID | WBS | Task | Type | Duration | Start | Finish | Predecessors | Complete | Remaining | Total slack | Free slack | Resources | Work | Actual work | Cost | Actual cost |
| --- | --- | --- | --- | --- | --- | --- | --- | --- | --- | --- | --- | --- | --- | --- | --- | --- |
| 1 | 1 | Начало проекта | milestone | 0d | 2025-09-15 | 2025-09-15 |  |  |  | 305d | 300d |  |  |  |  |  |
| 2 | 2 | **Утверждение проектов** |  | 101d | 2025-09-15 | 2026-02-06 |  |  |  | 204d |  |  | 1800h |  | 2,250,000 |  |
| 3 | 2.1 | Начало утверждения проектов |  | 1d | 2025-09-15 | 2025-09-15 |  |  |  | 204d | 0d |  |  |  |  |  |
| 4 | 2.2 | Утверждение проекта на строительство |  | 90d | 2025-09-16 | 2026-01-23 | 3 |  |  | 214d | 10d | Архитектор | 720h |  | 550,000 |  |
| 5 | 2.3 | Утверждение проекта на газ |  | 100d | 2025-09-16 | 2026-02-06 | 3 |  |  | 204d | 0d | МУП «Горгаз» | 480h |  | 700,000 |  |
| 6 | 2.4 | Утверждение проекта на водопровод и канализацию |  | 60d | 2025-09-16 | 2025-12-10 | 3 |  |  | 244d | 40d | МУП «Водоканал» | 240h |  | 500,000 |  |
| 7 | 2.5 | Утверждение проекта на отопление |  | 90d | 2025-09-16 | 2026-01-23 | 3 |  |  | 214d | 10d | АО «Водолей2» | 360h |  | 500,000 |  |
| 8 | 2.6 | Проекты утверждены | milestone | 0d | 2026-02-06 | 2026-02-06 | 4, 5, 6, 7 |  |  | 204d | 199d |  |  |  |  |  |
| 9 | 3 | **Строительство фундамента** |  | 90d | 2025-11-30 A | 2026-04-07 |  | 99% | 0d | 0d |  |  | 1552h | 1552h | 1,536,000 | 1,536,000 |
| 10 | 3.1 | Начало закладки фундамента |  | 2d | 2026-02-09 A | 2026-02-10 A | 8 | 100% |  |  |  |  | 16h | 16h |  |  |
| 11 | 3.2 | Рытье траншей |  | 32d | 2026-02-11 A | 2026-03-26 A | 10 | 100% |  |  |  | Рабочий1; Рабочий2; Рабочий3; Подсобник1; Подсобник2; Трактор | 1536h | 1536h | 1,286,000 | 1,286,000 |
| 12 | 3.3 | Заливка фундамента | milestone | 0d | 2025-11-30 A | 2026-02-24 A | 11 | 100% |  |  |  | Рабочий1; Рабочий2; Рабочий3; Подсобник1; Подсобник2; Песок; Щебень; Цемент; Доска необрезная; Доставка [0.1%] |  |  | 250,000 | 250,000 |
| 13 | 3.4 | Фундамент завершен | milestone | 0d | 2026-04-07 | 2026-04-07 | 12FS+30d |  |  | 0d |  |  |  |  |  |  |
| 14 | 4 | **Каркас и крыша** |  | 111d | 2026-04-08 | 2026-09-11 |  |  |  | 0d |  |  | 3616h |  | 25,320,000 |  |
| 15 | 4.1 | Начало каркаса |  | 1d | 2026-04-08 | 2026-04-08 | 13 |  |  | 0d |  |  |  |  |  |  |
| 16 | 4.2 | Кладка стен |  | 60d | 2026-04-09 | 2026-07-02 | 15 |  |  | 0d |  | Рабочий1; Рабочий2; Рабочий3; Подсобник1; Подсобник2; Кирпич [70000 шт]; Песок [6 т]; Цемент [2 т]; Доставка [0.1%] | 2400h |  | 9,270,000 |  |
| 17 | 4.3 | Перекрытие стен |  | 15d | 2026-07-06 | 2026-07-24 | 16 |  |  | 0d |  | Рабочий1; Рабочий2; Рабочий3; Подсобник1; Подсобник2; Брус [1500%]; Доска обрезная [7 м3]; Доставка [0.1%] | 600h |  | 1,460,000 |  |
| 18 | 4.4 | Установка крыши |  | 30d | 2026-07-27 | 2026-09-04 | 17 |  |  | 5d |  | Плотник1; Плотник2; Доска необрезная [10 м3]; Шифер [2000%]; Доставка [0.1%] | 480h |  | 10,020,000 |  |
| 19 | 4.5 | Установка наружных дверей и окон |  | 7d | 2026-07-27 | 2026-08-04 | 17 |  |  | 28d |  | АО «Неопласт»; Окно [900%]; Дверь наружная | 56h |  | 2,300,000 |  |
| 20 | 4.6 | Установка полов |  | 5d | 2026-09-07 | 2026-09-11 | 17 |  |  | 0d |  | Плотник1; Плотник2; Доска обрезная [10 м3]; Доставка [0.1%] | 80h |  | 2,270,000 |  |
| 21 | 4.7 | Каркас готов | milestone | 0d | 2026-09-11 | 2026-09-11 | 18, 19, 20 |  |  | 0d |  |  |  |  |  |  |
| 22 | 5 | **Коммуникации** |  | 11d | 2026-09-14 | 2026-09-28 |  |  |  | 0d |  |  | 240h |  | 1,810,000 |  |
| 23 | 5.1 | Начало установки коммуникаций |  | 1d | 2026-09-14 | 2026-09-14 | 21 |  |  | 0d |  |  |  |  |  |  |
| 24 | 5.2 | Проведение и подключение водопровода и канализации |  | 10d | 2026-09-15 | 2026-09-28 | 23 |  |  | 0d |  | Водопроводчик1; Водопроводчик2; Труба водопроводная; Труба канализационная | 160h |  | 810,000 |  |
| 25 | 5.3 | Установка и подключение электропроводки |  | 5d | 2026-09-15 | 2026-09-21 | 23 |  |  | 5d |  | Электрик; Электросчетчик; Электропровод [10000%] | 40h |  | 250,000 |  |
| 26 | 5.4 | Установка и подключение газовых коммуникаций |  | 5d | 2026-09-15 | 2026-09-21 | 23 |  |  | 5d |  | АО «Газовик»; Труба газовая | 40h |  | 750,000 |  |
| 27 | 5.5 | Коммуникации готовы | milestone | 0d | 2026-09-28 | 2026-09-28 | 24, 25, 26 |  |  | 0d |  |  |  |  |  |  |

| ID | WBS | Task | Type | Duration | Start | Finish | Predecessors | Total slack | Constraint | Resources | Work | Cost |
| --- | --- | --- | --- | --- | --- | --- | --- | --- | --- | --- | --- | --- |
| 28 | 6 | **Внутренняя отделка** |  | 40d | 2026-09-28 | 2026-11-23 |  | 0d |  |  | 1160h | 11,664,000 |
| 29 | 6.1 | Начало отделки | milestone | 0d | 2026-09-28 | 2026-09-28 | 27 | 0d |  |  |  |  |
| 30 | 6.2 | Внутренние двери |  | 10d | 2026-09-29 | 2026-10-12 | 29 | 0d |  | Плотник1; Плотник2; Дверь внутренняя [1000%]; Доставка [0.1%] | 160h | 4,000,000 |
| 31 | 6.3 | Навесные потолки |  | 5d | 2026-10-13 | 2026-10-19 | 30 | 5d |  | ООО «Потолки»; Потолок [190 м2] | 40h | 1,785,000 |
| 32 | 6.4 | Отделка стен |  | 3d | 2026-10-29 | 2026-11-02 | 30 | 0d | as late as possible | Рабочий1; Рабочий2; Рабочий3; Подсобник1; Подсобник2; Штукатурка [10000%] | 120h | 1,614,000 |
| 33 | 6.5 | Монтаж отопления |  | 10d | 2026-10-13 | 2026-10-26 | 30 | 0d |  | Водопроводчик1; Водопроводчик2; Труба отопительная | 160h | 360,000 |
| 34 | 6.6 | Установка оборудования, приборов, сантехники |  | 5d | 2026-10-27 | 2026-11-02 | 31, 33 | 0d |  | Водопроводчик1; Водопроводчик2; Котел; Печь газовая; Ванна; Унитаз компакт [200%]; Раковина [300%]; Кран [400%] | 80h | 2,290,000 |
| 35 | 6.7 | Настил полов |  | 15d | 2026-11-03 | 2026-11-23 | 32, 34 | 0d |  | Рабочий1; Рабочий2; Рабочий3; Подсобник1; Подсобник2; Паркет [190 м2] | 600h | 1,615,000 |
| 36 | 6.8 | Конец отделки | milestone | 0d | 2026-11-23 | 2026-11-23 | 35 | 0d |  |  |  |  |
| 37 | 7 | Конец проекта | milestone | 0d | 2026-11-23 | 2026-11-23 | 36 | 0d |  |  |  |  |
