Schedule from MS Project, 2025-09-15 to 2026-03-24, costs in ₽.

## Calendars

- Стандартный: Mon-Fri 09:00-13:00, 14:00-18:00; Sat-Sun off.

## Resources

| Resource | Rate | Cost per use |
| --- | --- | --- |
| ГлавБух | 5625 | 300000 |
| Администратор | 4375 | 400000 |
| Программист | 3750 | 500000 |
| Техник | 2500 |  |
| Бухгалтер мат учета1 | 2500 |  |
| Бухгалтер мат учета2 | 2500 |  |
| Бухгалтер учета ОС и НМА | 2500 |  |
| Бухгалтер учета ОС | 2500 |  |
| Бухгалтер учета реализации | 2500 |  |
| Компьютер | 1500000 |  |
| Сервер | 1500000 |  |
| Принтер | 150000 |  |
| МФУ | 170000 |  |
| Сетевой кабель |  | 150000 |
| Сетевой концентратор | 30000 |  |
| Панель |  | 100000 |
| Разьемы и розетки |  | 150000 |
| Бухгалтерская система |  | 1000000 |
| Офисный пакет |  | 700000 |
| ОС рабочей станции |  | 600000 |
| Серверная ОС |  | 300000 |
| Интернет |  |  |
| Междугородние переговоры |  |  |
| Бухгалтер производственного учета | 2500 |  |

## Schedule

| ID | WBS | Task | Type | Duration | Start | Finish | Predecessors | Total slack | Resources | Work | Cost |
| --- | --- | --- | --- | --- | --- | --- | --- | --- | --- | --- | --- |
| 1 | 1 | Начало проекта | milestone, manual | 0d | 2025-09-15 | 2025-09-15 |  |  |  |  |  |
| 2 | 2 | **Выбор системы** |  | 16d | 2025-09-15 | 2025-10-07 |  | 0d |  | 211.2h | 2,963,000 |
| 3 | 2.1 | Изучение рынка бухгалтерских систем | manual | 7d | 2025-09-15 | 2025-09-23 | 1 |  | Администратор; Интернет [0.1%] | 56h | 660,000 |
| 4 | 2.2 | Составление требований к бухгалтерским системам | manual | 7d | 2025-09-15 | 2025-09-23 | 1 |  | Администратор; ГлавБух [20%] | 67.2h | 768,000 |
| 5 | 2.3 | Консультации с фирмами-разработчиками | manual | 7d | 2025-09-24 | 2025-10-02 | 3, 4 |  | Администратор; Междугородние переговоры [0.1%]; Интернет [0.1%] | 56h | 675,000 |
| 6 | 2.4 | Принятие окончательного решения | manual | 2d | 2025-10-03 | 2025-10-06 | 5 |  | Администратор; ГлавБух | 32h | 860,000 |
| 7 | 2.5 | Выбор завершен | milestone, manual | 0d | 2025-10-07 | 2025-10-07 | 6 |  |  |  |  |
| 8 | 3 | **Приобретение программного обеспечения** |  | 11d | 2025-10-07 | 2025-10-22 |  | 0d |  | 152.8h | 4,517,000 |
| 9 | 3.1 | Заключение договоров | manual | 6d | 2025-10-07 | 2025-10-14 | 2 |  | Администратор; Программист; ГлавБух | 144h | 1,860,000 |
| 10 | 3.2 | Оплата за ПО | manual | 2d | 2025-10-15 | 2025-10-16 | 9 |  | ГлавБух [10%]; Бухгалтерская система; Офисный пакет; ОС рабочей станции; Серверная ОС | 1.6h | 2,639,000 |
| 11 | 3.3 | Оформление ПО на баланс | manual | 3d | 2025-10-17 | 2025-10-21 | 10 |  | Бухгалтер учета ОС и НМА [30%] | 7.2h | 18,000 |
| 12 | 3.4 | Приобретение ПО завершено | milestone, manual | 0d | 2025-10-22 | 2025-10-22 | 11 |  |  |  |  |
| 13 | 4 | **Приобретение компьютеров и сетевого оборудования** |  | 22d | 2025-10-07 | 2025-11-06 |  | 0d |  | 137.6h | 22,316,500 |
| 14 | 4.1 | Сбор информации о поставщиках и предложениях | manual | 7d | 2025-10-07 | 2025-10-15 | 7 |  | Администратор [50%]; Интернет [0.1%]; Междугородние переговоры [0.1%] | 28h | 347,500 |
| 15 | 4.2 | Анализ и выбор поставщика | manual | 5d | 2025-10-16 | 2025-10-22 | 14 |  | Администратор [50%]; ГлавБух [20%]; Интернет [0.1%] | 28h | 402,500 |
| 16 | 4.3 | Заключение договоров | manual | 5d | 2025-10-23 | 2025-10-29 | 15 |  | Администратор; ГлавБух [50%] | 60h | 837,500 |
| 17 | 4.4 | Оплата за оборудование | manual | 2d | 2025-10-30 | 2025-10-31 | 16 |  | ГлавБух [30%]; Компьютер [1200%]; Сервер; Принтер [200%]; МФУ [200%]; Сетевой кабель [2000%]; Сетевой концентратор; Панель [500%]; Разьемы и розетки [1000%] | 4.8h | 20,687,000 |
| 18 | 4.5 | Оформление оборудования на баланс | manual | 3d | 2025-11-03 | 2025-11-05 | 17 |  | Бухгалтер учета ОС [70%] | 16.8h | 42,000 |
| 19 | 4.6 | Приобретение оборудования завершено | milestone, manual | 0d | 2025-11-06 | 2025-11-06 | 18 |  |  |  |  |
| 20 | 5 | **Монтаж локальной сети** |  | 15d | 2025-11-06 | 2025-11-27 |  | 0d |  | 224h | 560,000 |
| 21 | 5.1 | Установка компьютеров на рабочих местах | manual | 3d | 2025-11-06 | 2025-11-10 | 19 |  | Техник | 24h | 60,000 |
| 22 | 5.2 | Монтаж кабеля | manual | 10d | 2025-11-06 | 2025-11-19 | 19 |  | Техник | 80h | 200,000 |
| 23 | 5.3 | Монтаж сетевых устройств | manual | 10d | 2025-11-06 | 2025-11-19 | 19 |  | Техник | 80h | 200,000 |
| 24 | 5.4 | Подключение кабеля к компьютерам и сетевым устройствам | manual | 5d | 2025-11-20 | 2025-11-26 | 21, 22, 23 |  | Техник | 40h | 100,000 |
| 25 | 5.5 | Монтаж завершен | milestone, manual | 0d | 2025-11-27 | 2025-11-27 | 24 |  |  |  |  |

| ID | WBS | Task | Type | Duration | Start | Finish | Predecessors | Total slack | Resources | Work | Cost |
| --- | --- | --- | --- | --- | --- | --- | --- | --- | --- | --- | --- |
| 26 | 6 | **Установка ПО на компьютеры** |  | 17d | 2025-11-27 | 2025-12-22 |  | 0d |  | 176h | 2,445,000 |
| 27 | 6.1 | Установка сервера | manual | 5d | 2025-11-27 | 2025-12-03 | 25 |  | Администратор | 40h | 575,000 |
| 28 | 6.2 | Создание доменов и пользователей | manual | 7d | 2025-12-04 | 2025-12-12 | 27 |  | Администратор | 56h | 645,000 |
| 29 | 6.3 | Проверка и настройка работы сети | manual | 5d | 2025-12-15 | 2025-12-19 | 28 |  | Администратор; Программист | 80h | 1,225,000 |
| 30 | 6.4 | Настройка сети завершена | milestone, manual | 0d | 2025-12-22 | 2025-12-22 | 29 |  |  |  |  |
| 31 | 7 | **Обучение персонала** |  | 58d | 2025-12-22 | 2026-03-12 |  | 0d |  | 1888h | 7,567,500 |
| 32 | 7.1 | Принципы работы системы | manual | 3d | 2025-12-22 | 2025-12-24 | 30 |  | Администратор [50%]; ГлавБух [50%]; Бухгалтер мат учета1 [50%]; Бухгалтер мат учета2 [50%]; Бухгалтер учета ОС [50%]; Бухгалтер учета ОС и НМА [50%]; Бухгалтер учета реализации [50%]; Бухгалтер производственного учета | 108h | 680,000 |
| 33 | 7.2 | Изучение интерфейса | manual | 5d | 2025-12-25 | 2025-12-31 | 32 |  | Бухгалтер производственного учета [50%]; ГлавБух [50%]; Программист; Бухгалтер мат учета1 [50%]; Бухгалтер мат учета2 [50%]; Бухгалтер учета ОС [50%]; Бухгалтер учета ОС и НМА [50%]; Бухгалтер учета реализации [50%] | 180h | 1,212,500 |
| 34 | 7.3 | Изучение справочников | manual | 20d | 2026-01-01 | 2026-01-28 | 33 |  | Программист [50%]; ГлавБух [50%]; Бухгалтер мат учета1 [50%]; Бухгалтер мат учета2 [50%]; Бухгалтер производственного учета [50%]; Бухгалтер учета ОС [50%]; Бухгалтер учета ОС и НМА [50%]; Бухгалтер учета реализации [50%] | 640h | 2,350,000 |
| 35 | 7.4 | Изучение документов и журналов | manual | 30d | 2026-01-29 | 2026-03-11 | 34 |  | ГлавБух [50%]; Программист [50%]; Бухгалтер мат учета1 [50%]; Бухгалтер мат учета2 [50%]; Бухгалтер производственного учета [50%]; Бухгалтер учета ОС [50%]; Бухгалтер учета ОС и НМА [50%]; Бухгалтер учета реализации [50%] | 960h | 3,325,000 |
| 36 | 7.5 | Обучение завершено | milestone, manual | 0d | 2026-03-12 | 2026-03-12 | 35 |  |  |  |  |
| 37 | 8 | **Передача в эксплуатацию** |  | 8d | 2026-03-12 | 2026-03-24 |  | 0d |  | 144h | 2,220,000 |
| 38 | 8.1 | Формирование тестовой отчетности | manual | 5d | 2026-03-12 | 2026-03-18 | 36 |  | Администратор; ГлавБух; Программист | 120h | 1,750,000 |
| 39 | 8.2 | Акт ввода в эксплуатацию | manual | 3d | 2026-03-19 | 2026-03-23 | 38 |  | Администратор [50%]; ГлавБух [50%] | 24h | 470,000 |
| 40 | 8.3 | Передача в эксплуатацию завершена | milestone, manual | 0d | 2026-03-24 | 2026-03-24 | 39 |  |  |  |  |
| 41 | 9 | Конец проекта | milestone, manual | 0d | 2026-03-24 | 2026-03-24 | 40 |  |  |  |  |
